Schedule from GanttProject, 2017-01-11 to 2017-08-22.

## Calendars

- Project calendar: Mon-Sun working.

## Resources

| Resource |
| --- |
| ssohail |
| cgriffin |
| javedm |
| aarehman |
| ziaa |
| mahmad |
| hsrivast |
| araghura |
| atraza |

## Schedule

| ID | WBS | Task | Duration | Start | Finish | Complete | Resources | Jira |
| --- | --- | --- | --- | --- | --- | --- | --- | --- |
| 1 | 1 | **Project** | 224d | 2017-01-11 | 2017-08-22 | 84% |  |  |
| 2 | 1.1 | **SPL-A1 M.5/D.3** | 31d | 2017-01-18 | 2017-02-17 | 100% |  | MEH-2773 |
| 3 | 1.1.1 | Integrate audio and IPU ACPI tables into the guest ACPI tables for SPL A1 | 2d | 2017-02-01 | 2017-02-02 | 100% | ssohail | MEH-2830 |
| 4 | 1.1.2 | Increase memory allocated for VM1. | 1d | 2017-01-24 | 2017-01-24 | 100% | cgriffin | MEH-2761 |
| 5 | 1.1.3 | Evaluate/Integrate patch provided by ABU for the TSC issue | 1d | 2017-02-03 | 2017-02-03 | 100% | javedm | MEH-2839 |
| 6 | 1.1.4 | **Development Drops** | 26d | 2017-01-23 | 2017-02-17 | 100% |  | MEH-2860 |
| 7 | 1.1.4.1 | MEHV internal release 1.3 | 1d | 2017-01-23 | 2017-01-23 | 100% | javedm | MEH-2806 |
| 8 | 1.1.4.2 | MEHV internal release 1.4 | 2d | 2017-01-26 | 2017-01-27 | 100% | javedm | MEH-2822 |
| 9 | 1.1.4.3 | MEHV internal release 1.5 | 1d | 2017-02-02 | 2017-02-02 | 100% | javedm | MEH-2837 |
| 10 | 1.1.4.4 | MEHV internal release 1.6 | 1d | 2017-02-08 | 2017-02-08 | 100% | javedm | MEH-2859 |
| 11 | 1.1.4.5 | MEHV internal release 1.7 | 1d | 2017-02-17 | 2017-02-17 | 100% | javedm | MEH-2886 |
| 12 | 1.1.5 | **Boot Time Optimizations** | 11d | 2017-02-07 | 2017-02-17 | 100% |  | MEH-2851 |
| 13 | 1.1.5.1 | Measure boot time | 11d | 2017-02-07 | 2017-02-17 | 100% | javedm | MEH-2856 |
| 14 | 1.1.5.2 | Try delayed GTT initialization with i915.tsd_init | 3d | 2017-02-13 | 2017-02-15 | 100% | aarehman | MEH-2870 |
| 15 | 1.1.5.3 | Optimize delays observed during boot time on VM0 and VM1 | 7d | 2017-02-09 | 2017-02-15 | 100% |  | MEH-2769 |
| 16 | 1.1.6 | **CPU Performance** | 20d | 2017-01-20 | 2017-02-08 | 100% |  | MEH-2786 |
| 17 | 1.1.6.1 | Run CPU benchmarks and tune performance on guest virtual machines. | 20d | 2017-01-20 | 2017-02-08 | 100% |  | MEH-2793 |
| 18 | 1.1.6.2 | Remove rdtsc virtualization and use tsc offsetting instead for offsetting boot time bias | 1d | 2017-01-30 | 2017-01-30 | 100% | ssohail | MEH-2824 |
| 19 | 1.1.7 | **Bugs** | 29d | 2017-01-18 | 2017-02-15 | 100% |  | MEH-2817 |
| 20 | 1.1.7.1 | TSC frequency should be calculated properly | 6d | 2017-02-09 | 2017-02-14 | 100% | ssohail | MEH-2864 |
| 21 | 1.1.7.2 | VM life cycle management should be char-device based rather than syscall based | 7d | 2017-02-08 | 2017-02-14 | 100% | ssohail | MEH-2857 |
| 22 | 1.1.7.3 | Investigate and fix kernel timer issues on VM1 and VM0 (if there are issues observed on VM0) | 15d | 2017-01-19 | 2017-02-02 | 100% | cgriffin | MEH-2796 |
| 23 | 1.1.7.4 | Update CS for APs using value from ICR. | 4d | 2017-01-20 | 2017-01-23 | 100% | javedm | MEH-2798 |
| 24 | 1.1.7.5 | i2c driver fails on VM0 | 1d | 2017-01-24 | 2017-01-24 | 100% | javedm | MEH-2651 |
| 25 | 1.1.7.6 | VM1 unable to boot with multiple cpus when ACPI enabled | 2d | 2017-01-18 | 2017-01-19 | 100% | javedm | MEH-2789 |
| 26 | 1.1.7.7 | Preemption Timer Interrupt hitting earlier than configured period | 2d | 2017-01-26 | 2017-01-27 | 100% | ssohail | MEH-2820 |

| ID | WBS | Task | Duration | Start | Finish | Complete | Resources | Jira |
| --- | --- | --- | --- | --- | --- | --- | --- | --- |
| 27 | 1.1.7.8 | **Foreground bug** | 7d | 2017-02-09 | 2017-02-15 | 100% |  | MEH-2872 |
| 28 | 1.1.7.8.1 | Sync signal needed between VM1 and VM0 to set foreground | 5d | 2017-02-09 | 2017-02-13 | 100% | aarehman | MEH-2858 |
| 29 | 1.1.7.8.2 | Workaround for set foreground bug | 5d | 2017-02-10 | 2017-02-14 | -100% | aarehman | MEH-2867 |
| 30 | 1.1.7.8.3 | Integrate Intel's fix for set foreground bug | 3d | 2017-02-13 | 2017-02-15 | -100% | javedm | MEH-2871 |
| 31 | 1.1.7.9 | **Console Logs analysis** | 3d | 2017-02-07 | 2017-02-09 | 100% |  | MEH-2862 |
| 32 | 1.1.7.9.1 | Analyze console logs between XenGT Vs MEHV and qualify the nature of graphics related errors and warnings | 3d | 2017-02-07 | 2017-02-09 | 100% | ziaa | MEH-2847 |
| 33 | 1.1.7.9.2 | Investigate why atomic warning is observed when nuclear_pageflip is disabled: | 3d | 2017-02-07 | 2017-02-09 | 100% | aarehman | MEH-2861 |
| 34 | 1.2 | **SPL-A2 M.6/D.4** | 45d | 2017-02-14 | 2017-03-30 | 97% |  | MEH-2772 |
| 35 | 1.2.1 | **Boot Time Optimizations** | 30d | 2017-02-19 | 2017-03-20 | 100% |  | MEH-2906 |
| 36 | 1.2.1.1 | Optimize delays observed during boot time on VM0 and VM1 | 12d | 2017-02-19 | 2017-03-02 | -100% | cgriffin | MEH-2893 |
| 37 | 1.2.1.2 | Eliminate hypercall at end of vgt emulation thread completion | 14d | 2017-03-07 | 2017-03-20 | 100% | cgriffin | MEH-2939 |
| 38 | 1.2.1.3 | Investigate necessity and overhead of HVM Loader. | 1d | 2017-02-28 | 2017-02-28 | 100% | cgriffin | MEH-2919 |
| 39 | 1.2.1.4 | Determine cause of 6.5 second delay during VM1 boot | 18d | 2017-02-28 | 2017-03-17 | -100% | cgriffin | MEH-2916 |
| 40 | 1.2.1.5 | Remove HVM loader and boot VM1 in parallel to VM0 | 1d | 2017-02-28 | 2017-02-28 | 100% | aarehman | MEH-2922 |
| 41 | 1.2.1.6 | Verify Clydes Patches for early vgt instance creation on neusoft | 5d | 2017-03-06 | 2017-03-10 | 100% | aarehman | MEH-2935 |
| 42 | 1.2.1.7 | Verify Clydes Patch for NFS timeout and do boottime analysis | 1d | 2017-03-13 | 2017-03-13 | 100% | aarehman | MEH-2953 |
| 43 | 1.2.2 | **Enable support for POC 5** | 13d | 2017-02-24 | 2017-03-08 | 100% | cgriffin | MEH-2940 |
| 44 | 1.2.2.1 | POC 5 – 02/24 | 6d | 2017-02-24 | 2017-03-01 | -100% | mahmad | MEH-2895 |
| 45 | 1.2.2.2 | Enable GVT-g from POC 5 on MRB | 1d | 2017-03-08 | 2017-03-08 | 100% | cgriffin | MEH-2941 |
| 46 | 1.2.3 | **MEHV for GP 1.0.1 and ABL 1651** | 23d | 2017-02-20 | 2017-03-14 | 100% |  | MEH-2882 |
| 47 | 1.2.3.1 | GP 1.0.1 (ABU) | 18d | 2017-02-20 | 2017-03-09 | -100% |  | MEH-2894 |
| 48 | 1.2.3.2 | ABL 1651 from ABU | 1d | 2017-02-20 | 2017-02-20 | -100% |  | MEH-2907 |
| 49 | 1.2.3.3 | Enable GP 1.0.1 on Neusoft hardware | 13d | 2017-03-02 | 2017-03-14 | 100% | javedm | MEH-2888 |
| 50 | 1.2.3.4 | Enable ABL 1651 on Neusoft hardware | 1d | 2017-02-21 | 2017-02-21 | -100% | javedm | MEH-2887 |

| ID | WBS | Task | Duration | Start | Finish | Complete | Resources | Jira |
| --- | --- | --- | --- | --- | --- | --- | --- | --- |
| 51 | 1.2.4 | **Development Drops** | 27d | 2017-03-02 | 2017-03-28 | 100% |  | MEH-2929 |
| 52 | 1.2.4.1 | MEHV internal release 1.6.1 | 1d | 2017-03-16 | 2017-03-16 | -100% | hsrivast | HL-427 |
| 53 | 1.2.4.2 | Custom MEHV 1.6.1 build modified ACPI | 1d | 2017-03-28 | 2017-03-28 | -100% | javedm | HL-439 |
| 54 | 1.2.4.3 | MEHV internal release 1.8 | 1d | 2017-03-02 | 2017-03-02 | -100% | hsrivast | HL-402 |
| 55 | 1.2.4.4 | MEHV internal release 2.0 | 2d | 2017-03-14 | 2017-03-15 | -100% | hsrivast | HL-412 |
| 56 | 1.2.4.5 | MEHV internal release 2.1 | 1d | 2017-03-28 | 2017-03-28 | -100% | hsrivast | HL-445 |
| 57 | 1.2.5 | **Misc** | 37d | 2017-02-22 | 2017-03-30 | 100% |  | MEH-2943 |
| 58 | 1.2.5.1 | Rename MEHV_POChar to mehv_ops | 1d | 2017-03-30 | 2017-03-30 | -100% | javedm | MEH-2977 |
| 59 | 1.2.5.2 | Automate kernel entry address update in guests.cfg | 5d | 2017-03-10 | 2017-03-14 | -100% | javedm | MEH-2938 |
| 60 | 1.2.5.3 | GPU benchmarks SPLA-1 release | 1d | 2017-03-07 | 2017-03-07 | 100% | aarehman | MEH-2936 |
| 61 | 1.2.5.4 | Allocate ample memory for ACPI tables to remove need for manual fixup on medications to ACPI tables | 1d | 2017-02-22 | 2017-02-22 | -100% | javedm | MEH-2762 |
| 62 | 1.2.5.5 | Hypervisor documentation updates | 2d | 2017-03-28 | 2017-03-29 | 100% | javedm | MEH-2909 |
| 63 | 1.2.6 | **Bugs** | 45d | 2017-02-14 | 2017-03-30 | 94% |  | MEH-2785 |
| 64 | 1.2.6.1 | Crash with MEHV 2.0 after following command "echo l > /proc/sysrq-trigger" | 1d | 2017-03-30 | 2017-03-30 | -100% | javedm | HL-433 |
| 65 | 1.2.6.2 | POC5 kernel bring-up: EPT violation | 1d | 2017-03-08 | 2017-03-08 | -100% | javedm | HL-407 |
| 66 | 1.2.6.3 | SPI device /dev/spi0.0 does not come up in Cluster VM. | 12d | 2017-03-03 | 2017-03-14 | 100% | javedm | MEH-2930 |
| 67 | 1.2.6.4 | Display artifacts on IVI display on Neusoft hardware | 1d | 2017-03-03 | 2017-03-03 | 100% | ziaa | MEH-2931 |
| 68 | 1.2.6.5 | Improve MEHV char dev implementation. | 8d | 2017-03-02 | 2017-03-09 | 100% | ssohail | MEH-2908 |
| 69 | 1.2.6.6 | Investigate why MEHV guest CPU performance is slower than Xen | 14d | 2017-02-28 | 2017-03-13 | -100% | ziaa | MEH-2913 |
| 70 | 1.2.6.7 | **Reboot Issues** | 42d | 2017-02-14 | 2017-03-27 | 89% |  | MEH-2942 |
| 71 | 1.2.6.7.1 | IVI VM is not able to reboot itself | 18d | 2017-02-14 | 2017-03-03 | 100% | ssohail | MEH-2865 |
| 72 | 1.2.6.7.2 | Reboot of Cluster VM does not reboot IVI VM | 10d | 2017-03-15 | 2017-03-24 | 75% | ssohail | MEH-2963 |
| 73 | 1.2.6.7.3 | Verify vm reboot use cases | 1d | 2017-03-27 | 2017-03-27 | -100% | javedm | MEH-2970 |
| 74 | 1.2.6.8 | remove ADV7481A and ADV7481B from ACPI Tables | 1d | 2017-02-21 | 2017-02-21 | -100% | javedm | HL-394 |
| 75 | 1.2.6.9 | inconvenient choice of hypervisor hotkey | 3d | 2017-02-28 | 2017-03-02 | 100% | ssohail | HL-387 |
| 76 | 1.2.6.10 | i2c busses in hypervisor | 1d | 2017-02-28 | 2017-02-28 | -100% | hsrivast | HL-393 |
| 77 | 1.2.6.11 | hypervisor kernel header file Non-GPL again | 1d | 2017-02-27 | 2017-02-27 | -100% | javedm | HL-378 |
| 78 | 1.2.6.12 | Writing to a i2c device on VM1 after creating a vgt instance on VM0 crashes both the VM0 and VM1 | 8d | 2017-02-27 | 2017-03-06 | -100% | ziaa | HL-368 |
| 79 | 1.2.6.13 | Interrupts --Some of the device interrupts are NOT being delivered to CPU1 and CPU2 in VM1 | 1d | 2017-03-20 | 2017-03-20 | -100% | javedm | HL-367 |
| 80 | 1.2.6.14 | MMC1 timeout message on Linux console with Intel beta release | 2d | 2017-02-26 | 2017-02-27 | -100% | javedm | HL-264 |
| 81 | 1.2.6.15 | Resource Assignment Correction in VM's | 1d | 2017-03-01 | 2017-03-01 | -100% | javedm | HL-325 |

| ID | WBS | Task | Duration | Start | Finish | Complete | Resources | Jira |
| --- | --- | --- | --- | --- | --- | --- | --- | --- |
| 82 | 1.3 | **SPL-B M.8/D.5** | 61d | 2017-03-31 | 2017-05-30 |  |  | MEH-2959 |
| 83 | 1.3.1 | B Samples - M.7/P.8 from Neusoft | 1d | 2017-03-31 | 2017-03-31 | -100% |  | MEH-2961 |
| 84 | 1.3.2 | GVT-g EC6 Release from Intel | 1d | 2017-04-28 | 2017-04-28 | -100% |  | MEH-2956 |
| 85 | 1.3.3 | GVT-g Pre-Alpha Release from Intel | 1d | 2017-05-26 | 2017-05-26 | -100% |  | MEH-2957 |
| 86 | 1.4 | **SPL-C M.10/D.6** | 98d | 2017-05-17 | 2017-08-22 |  |  | MEH-2960 |
| 87 | 1.4.1 | GVT-g Alpha Release from Intel | 1d | 2017-07-07 | 2017-07-07 | -100% |  | MEH-2958 |
| 88 | 1.4.2 | C Samples - M9/P.8 from Neusoft | 1d | 2017-05-17 | 2017-05-17 | -100% |  | MEH-2962 |
| 89 | 1.5 | **Boot Time Optimizations** | 31d | 2017-02-28 | 2017-03-30 | 47% |  | MEH-2964 |
| 90 | 1.5.1 | GVT-g performance optimization and functionality discussions with Intel | 1d | 2017-02-28 | 2017-02-28 | -100% | cgriffin | MEH-2921 |
| 91 | 1.5.2 | Investigate running GVT-g emulation on a interrupt top half and bottom half. | 7d | 2017-03-07 | 2017-03-13 | 1% | cgriffin | MEH-2917 |
| 92 | 1.5.3 | Implement performance suggestions Intel grahics team | 2d | 2017-02-28 | 2017-03-01 | -100% | cgriffin | MEH-2914 |
| 93 | 1.5.4 | Investigate perfmance gains to be had if VM1's VGT instance is created in tandem with VM0's. | 4d | 2017-02-28 | 2017-03-03 | 19% | cgriffin | MEH-2918 |
| 94 | 1.5.5 | Quantify and investigate any opportunities for optimizing boot time w.r.t NFS based FS. | 1d | 2017-03-30 | 2017-03-30 | -100% | cgriffin | MEH-2915 |
| 95 | 1.5.6 | In conjunction with early VGT instance creation synchronize VM1 start to maximize VM1 early boot. | 4d | 2017-02-28 | 2017-03-03 | -100% | cgriffin | MEH-2920 |
| 96 | 1.6 | **Code clean up (umbrella task)** | 18d | 2017-03-13 | 2017-03-30 | 76% | javedm | MEH-2944 |
| 97 | 1.6.1 | Fix redundant header inclusions across the x64 Hypervisor code base | 1d | 2017-03-30 | 2017-03-30 | -100% | javedm | MEH-2945 |
| 98 | 1.6.2 | Error checking across the x64 Hypervisor code base | 1d | 2017-03-30 | 2017-03-30 | -100% | aarehman | MEH-2946 |
| 99 | 1.6.3 | Remove dead code | 1d | 2017-03-17 | 2017-03-17 | -100% | javedm | MEH-2947 |
| 100 | 1.6.4 | Remove redundant APIs | 1d | 2017-03-30 | 2017-03-30 | -100% | ssohail | MEH-2948 |
| 101 | 1.6.5 | Conform to Nucleus coding standard across code base | 4d | 2017-03-17 | 2017-03-20 | -100% | ziaa | MEH-2949 |
| 102 | 1.6.6 | Fix issues with abstractions and code organization | 1d | 2017-03-30 | 2017-03-30 | -100% | araghura | MEH-2950 |
| 103 | 1.6.7 | Implement consistent debug logging | 1d | 2017-03-30 | 2017-03-30 | -100% | araghura | MEH-2951 |
| 104 | 1.6.8 | Code Standardization | 2d | 2017-03-13 | 2017-03-14 | 100% | ssohail | MEH-2955 |
| 105 | 1.6.9 | TODO: Move ACPI_Init to hv_vm_acpi | 1d | 2017-03-30 | 2017-03-30 | -100% | javedm | MEH-2971 |

| ID | WBS | Task | Duration | Start | Finish | Complete | Resources | Jira |
| --- | --- | --- | --- | --- | --- | --- | --- | --- |
| 106 | 1.7 | **Backlog** | 80d | 2017-01-11 | 2017-03-31 | 61% |  | MEH-2788 |
| 107 | 1.7.1 | wifi driver fails to load in the IVI after a vmshutdown and vmboot sequence | 2d | 2017-03-30 | 2017-03-31 |  | ssohail | HL-320 |
| 108 | 1.7.2 | Hang on cluster kernel with intel kernel config option | 1d | 2017-03-24 | 2017-03-24 | -100% | javedm | HL-434 |
| 109 | 1.7.3 | **Enablement of 3rd display Pipeline** | 18d | 2017-02-13 | 2017-03-02 | 10% |  | MEH-2775 |
| 110 | 1.7.3.1 | 1.0.1 Kernel with 3rd display enabled (ABU) | 1d | 2017-02-24 | 2017-02-24 | -100% |  | MEH-2896 |
| 111 | 1.7.3.2 | Determine work involved in enabling third display pipeline on MEHV on NS HS7 HW | 1d | 2017-02-13 | 2017-02-13 | -100% | ziaa | MEH-2763 |
| 112 | 1.7.3.3 | Enable 3rd display on xen | 1d | 2017-02-23 | 2017-02-23 | 100% | aarehman | MEH-2900 |
| 113 | 1.7.3.4 | Third Display Enablement | 7d | 2017-02-24 | 2017-03-02 |  |  | MEH-2902 |
| 114 | 1.7.4 | I2C Bus 3 (LPSS_I2C_3) is assigned to cluster (vm0) | -30d | 2017-03-30 | 2017-03-30 | -100% | javedm | HL-334 |
| 115 | 1.7.5 | Kernel warning on VM1 in intel_display.c on winston init | 1d | 2017-03-27 | 2017-03-27 | -100% | aarehman | MEH-2968 |
| 116 | 1.7.6 | **Validate Intel Graphics** | 79d | 2017-01-11 | 2017-03-30 | 100% |  | MEH-2825 |
| 117 | 1.7.6.1 | Define and conduct endurance tests that validate reliability of gVTG graphics | 9d | 2017-01-19 | 2017-01-27 | 100% | ziaa | MEH-2794 |
| 118 | 1.7.6.2 | Validate Intel Graphics test suite and other userspace graphics components needed for Neusoft HS7 requirement specification works on MEHV/gVTG | 17d | 2017-01-11 | 2017-01-27 | 100% | aarehman | MEH-2752 |
| 119 | 1.7.6.3 | Try xsWayland rootfs sent by ABU | 4d | 2017-01-20 | 2017-01-23 | 100% | ziaa | MEH-2797 |
| 120 | 1.7.6.4 | Investigate failing gem_exec_flush test | 13d | 2017-01-27 | 2017-02-08 | 100% | ziaa | MEH-2823 |
| 121 | 1.7.6.5 | Investigate failing gem_exec_parallel test | 7d | 2017-02-02 | 2017-02-08 | 100% | ziaa | MEH-2834 |
| 122 | 1.7.6.6 | Intel-GPU-tools Unit-tests on XEN and MEHV | 22d | 2017-01-30 | 2017-02-20 | 100% | aarehman | MEH-2827 |
| 123 | 1.7.6.7 | Investigating failed unit-test: kms_busy | 1d | 2017-01-31 | 2017-01-31 | 100% | aarehman | MEH-2826 |
| 124 | 1.7.6.8 | Investigating failed unit-test: kms_properties | 1d | 2017-02-02 | 2017-02-02 | 100% | aarehman | MEH-2831 |
| 125 | 1.7.6.9 | Investigating failed unit-test: testdisplay | 1d | 2017-02-03 | 2017-02-03 | 100% | aarehman | MEH-2841 |
| 126 | 1.7.6.10 | Investigate failing unit tests under VM1 of MEHV | 1d | 2017-03-30 | 2017-03-30 | -100% | ziaa | MEH-2911 |
| 127 | 1.7.6.11 | Investigate GPU performance regression with MEVH | 1d | 2017-03-30 | 2017-03-30 | -100% |  | MEH-2912 |
| 128 | 1.7.7 | GPIO virtualization | 1d | 2017-03-30 | 2017-03-30 | -100% | atraza | MEH-2892 |
| 129 | 1.7.8 | Audio virtualization | 2d | 2017-02-27 | 2017-02-28 | -100% | atraza | MEH-2891 |

| ID | WBS | Task | Duration | Start | Finish | Complete | Resources | Jira |
| --- | --- | --- | --- | --- | --- | --- | --- | --- |
| 130 | 1.7.9 | **Stability/Improvements** | 43d | 2017-02-16 | 2017-03-30 | 100% |  | MEH-2777 |
| 131 | 1.7.9.1 | HVM loader clean-up | 1d | 2017-03-30 | 2017-03-30 | -100% | javedm | MEH-2770 |
| 132 | 1.7.9.2 | Verify GPU recovery | -76d | 2017-03-30 | 2017-03-30 | -100% | ziaa | MEH-2767 |
| 133 | 1.7.9.3 | Gvt-g operation during VM1 reboots | -34d | 2017-02-16 | 2017-02-16 | -100% |  | MEH-2766 |
| 134 | 1.7.10 | Enablement of 4 Displays (MIPI-DSI) bridge | 1d | 2017-03-30 | 2017-03-30 | -100% |  | MEH-2883 |
| 135 | 1.7.11 | 3x 1080p video decoding support | 1d | 2017-03-30 | 2017-03-30 | -100% |  | MEH-2884 |
| 136 | 1.7.12 | **Enabling Video on MEHV on NS HS7 HW** | 14d | 2017-03-01 | 2017-03-14 | 30% |  | MEH-2776 |
| 137 | 1.7.12.1 | Determine work involved in enabling Video on MEHV on NS HS7 HW | 1d | 2017-03-14 | 2017-03-14 | -100% | ziaa | MEH-2765 |
| 138 | 1.7.12.2 | Running Video on Winston | 9d | 2017-03-01 | 2017-03-09 | -100% | aarehman | MEH-2934 |
| 139 | 1.7.13 | Develop intra-guest communication/signalling mechanism and infrastructure. | 4d | 2017-02-10 | 2017-02-13 | 100% |  | MEH-2866 |
| 140 | 1.7.14 | Remove dependency on MPS code. | 1d | 2017-03-20 | 2017-03-20 | 100% | javedm | MEH-2768 |
| 141 | 1.7.15 | Validate ACPI enablement to confirm the resource partitioning requirements for Neusoft HS7 system are met | -33d | 2017-03-30 | 2017-03-30 | -100% | hsrivast | MEH-2750 |
| 142 | 1.7.16 | Remove the delay between VM boots | 1d | 2017-03-30 | 2017-03-30 | -100% | ssohail | MEH-2759 |
| 143 | 1.7.17 | MEHV should be backwards compatible with older releases/drops to Neusoft. | 6d | 2017-01-25 | 2017-01-30 | 25% |  | MEH-2814 |
| 144 | 1.7.18 | Black Duck analysis | 1d | 2017-03-30 | 2017-03-30 | -100% | araghura | MEH-2890 |
